# HB WBS Durations

How a schedule from MS Project changed from version to version. A marks actual dates.

## Version 1 (data date 2017-01-18, saved 2017-02-28)

Note of the change: Added labor resources to MPP

| ID | WBS | Task | Duration | Start | Finish | Predecessors | Complete | Total float |
| --- | --- | --- | --- | --- | --- | --- | --- | --- |
| 1 | 1 | **Single Family House - Architect Design** | 129d | 2017-01-17 A | 2017-07-14 |  |  | 0d |
| 2 |  | Start Project Milestone | 0d | 2017-01-17 A | 2017-01-17 A |  | 100% |  |
| 3 | 1.2 | **General Conditions** | 118d | 2017-01-17 A | 2017-06-29 |  |  | 11d |
| 4 |  | Finalize plans and develop estimate with owner, architect | 10d | 2017-01-17 A | 2017-01-30 | 2 |  | 0d |
| 5 |  | Sign contract and notice to proceed | 1d | 2017-01-31 | 2017-01-31 | 4 |  | 0d |
| 6 | 1.2.3 | **Apply for Permits** | 10d | 2017-02-01 | 2017-02-14 |  |  | 0d |
| 7 |  | Secure foundation permit | 10d | 2017-02-01 | 2017-02-14 | 5 |  | 0d |
| 8 |  | Secure framing permit | 10d | 2017-02-01 | 2017-02-14 | 5 |  | 0d |
| 9 |  | Secure electrical permit | 10d | 2017-02-01 | 2017-02-14 | 5 |  | 0d |
| 10 |  | Secure plumbing permit | 10d | 2017-02-01 | 2017-02-14 | 5 |  | 0d |
| 11 |  | Secure HVAC permit | 10d | 2017-02-01 | 2017-02-14 | 5 |  | 0d |
| 12 |  | Secure miscellaneous permits | 10d | 2017-02-01 | 2017-02-14 | 5 |  | 108d |
| 13 | 1.2.4 | **Site Work** | 3d | 2017-02-15 | 2017-02-17 |  |  | 0d |
| 14 |  | Clear and grub lot | 1d | 2017-02-15 | 2017-02-15 | 7, 8, 9, 10, 11 |  | 0d |
| 15 |  | Install temporary power service | 1d | 2017-02-16 | 2017-02-16 | 14 |  | 105d |
| 16 |  | Install underground utilities | 1d | 2017-02-17 | 2017-02-17 | 15 |  | 105d |
| 17 | 1.2.5 | **Foundation** | 20d | 2017-02-16 | 2017-03-15 |  |  | 0d |
| 18 |  | Excavate for foundations | 1d | 2017-02-16 | 2017-02-16 | 14 |  | 0d |
| 19 |  | Form basement walls | 7d | 2017-02-17 | 2017-02-27 | 18 |  | 0d |
| 20 |  | Place concrete for foundations & basement walls | 1d | 2017-02-28 | 2017-02-28 | 19 |  | 0d |
| 21 |  | Cure basement walls for 7 days | 5d | 2017-03-01 | 2017-03-07 | 20 |  | 0d |
| 22 |  | Strip basement wall forms | 1d | 2017-03-08 | 2017-03-08 | 21 |  | 0d |
| 23 |  | Waterproof/insulate basement walls | 2d | 2017-03-09 | 2017-03-10 | 22 |  | 0d |
| 24 |  | Perform foundation inspection | 1d | 2017-03-13 | 2017-03-13 | 23 |  | 0d |
| 25 |  | Backfill foundation | 2d | 2017-03-14 | 2017-03-15 | 24 |  | 0d |
| 26 | 1.2.6 | **Framing** | 22d | 2017-03-16 | 2017-04-14 |  |  | 0d |
| 27 |  | Install 1st floor joists | 2d | 2017-03-16 | 2017-03-17 | 25 |  | 0d |
| 28 |  | Lay 1st floor decking | 2d | 2017-03-20 | 2017-03-21 | 27 |  | 0d |
| 29 |  | Frame 1st floor walls | 4d | 2017-03-22 | 2017-03-27 | 28 |  | 0d |
| 30 |  | Frame 1st floor corners | 1d | 2017-03-28 | 2017-03-28 | 29 |  | 0d |
| 31 |  | Install 2nd floor joists | 2d | 2017-03-29 | 2017-03-30 | 30 |  | 0d |
| 32 |  | Frame 2nd floor decking | 2d | 2017-03-31 | 2017-04-03 | 31 |  | 0d |
| 33 |  | Frame 2nd floor walls | 3d | 2017-04-04 | 2017-04-06 | 32 |  | 0d |
| 34 |  | Frame 2nd floor corners | 2d | 2017-04-07 | 2017-04-10 | 33 |  | 0d |
| 35 |  | Complete roof framing | 3d | 2017-04-11 | 2017-04-13 | 34 |  | 0d |
| 36 |  | Conduct framing inspection | 1d | 2017-04-14 | 2017-04-14 | 35 |  | 0d |
| 37 | 1.2.7 | **Dry In** | 4d | 2017-04-17 | 2017-04-20 |  |  | 55d |
| 38 |  | Install 1st floor sheathing | 1d | 2017-04-17 | 2017-04-17 | 36 |  | 55d |
| 39 |  | Install 2nd floor sheathing | 1d | 2017-04-17 | 2017-04-17 | 36 |  | 62d |
| 40 |  | Install roof decking | 2d | 2017-04-17 | 2017-04-18 | 36 |  | 61d |
| 41 |  | Install felt, flashing and shingles | 2d | 2017-04-19 | 2017-04-20 | 40 |  | 61d |
| 42 |  | Hang 1st floor exterior doors | 1d | 2017-04-18 | 2017-04-18 | 38 |  | 63d |
| 43 |  | Install 1st floor windows | 2d | 2017-04-18 | 2017-04-19 | 38 |  | 55d |
| 44 |  | Install 2nd floor windows | 2d | 2017-04-18 | 2017-04-19 | 39 |  | 62d |
| 45 | 1.2.8 | **Exterior Finishes** | 7d | 2017-04-20 | 2017-04-28 |  |  | 55d |
| 46 |  | Complete exterior brick | 4d | 2017-04-20 | 2017-04-25 | 43 |  | 55d |
| 47 |  | Complete exterior siding | 3d | 2017-04-26 | 2017-04-28 | 46 |  | 55d |
| 48 | 1.2.9 | **Utility Rough-B97Ins and Complete Concrete** | 23d | 2017-04-17 | 2017-05-17 |  |  | 0d |
| 49 |  | Rough-in plumbing | 5d | 2017-04-17 | 2017-04-21 | 36 |  | 0d |
| 50 |  | Conduct rough-in plumbing inspection | 1d | 2017-04-24 | 2017-04-24 | 49 |  | 0d |
| 51 |  | Place concrete for basement floor | 5d | 2017-04-25 | 2017-05-01 | 50 |  | 0d |
| 52 |  | Rough-in electrical | 5d | 2017-05-02 | 2017-05-08 | 51 |  | 0d |
| 53 |  | Conduct rough-in electrical inspection | 1d | 2017-05-09 | 2017-05-09 | 52 |  | 0d |
| 54 |  | Rough-in HVAC | 3d | 2017-05-10 | 2017-05-12 | 53 |  | 0d |
| 55 |  | Conduct rough-in HVAC inspection | 1d | 2017-05-15 | 2017-05-15 | 54 |  | 0d |
| 56 |  | Rough-in communication - phone, cable, computer, alarm | 2d | 2017-05-16 | 2017-05-17 | 55 |  | 0d |
| 57 | 1.2.10 | **Interior Finishes** | 31d | 2017-05-18 | 2017-06-29 |  |  | 0d |
| 58 | 1.2.10.1 | **Insulation** | 4d | 2017-05-18 | 2017-05-23 |  |  | 0d |
| 59 |  | Place wall insulation - 1st floor | 1d | 2017-05-18 | 2017-05-18 | 56 |  | 0d |
| 60 |  | Place wall insulation - 2nd floor | 1d | 2017-05-19 | 2017-05-19 | 59 |  | 0d |
| 61 |  | Place ceiling insulation - 2nd floor | 1d | 2017-05-22 | 2017-05-22 | 60 |  | 0d |
| 62 |  | Conduct insulation inspection | 1d | 2017-05-23 | 2017-05-23 | 61, 59, 60 |  | 0d |
| 63 | 1.2.10.2 | **Drywall** | 10d | 2017-05-24 | 2017-06-06 |  |  | 0d |
| 64 |  | Install drywall - 1st floor walls | 2d | 2017-05-24 | 2017-05-25 | 62 |  | 0d |
| 65 |  | Install drywall - 1st floor overhead | 2d | 2017-05-26 | 2017-05-29 | 64 |  | 0d |
| 66 |  | Install drywall 2nd floor walls | 2d | 2017-05-30 | 2017-05-31 | 65 |  | 0d |
| 67 |  | Install drywall 2nd floor overhead | 2d | 2017-06-01 | 2017-06-02 | 66 |  | 0d |
| 68 |  | Tape and float 1st floor drywall | 1d | 2017-06-05 | 2017-06-05 | 67 |  | 0d |
| 69 |  | Tape and float 2nd floor drywall | 1d | 2017-06-06 | 2017-06-06 | 68 |  | 0d |
| 70 | 1.2.10.3 | **Paint and Wallpaper** | 8d | 2017-06-07 | 2017-06-16 |  |  | 0d |

| ID | WBS | Task | Duration | Start | Finish | Predecessors | Total float |
| --- | --- | --- | --- | --- | --- | --- | --- |
| 71 |  | Texture all except entry and kitchen - 1st floor | 1d | 2017-06-07 | 2017-06-07 | 69 | 0d |
| 72 |  | Paint all except entry and kitchen - 1st floor | 1d | 2017-06-08 | 2017-06-08 | 71 | 0d |
| 73 |  | Hang wallpaper entry and kitchen - 1st floor | 1d | 2017-06-09 | 2017-06-09 | 72 | 19.5d |
| 74 |  | Texture all - 2nd floor | 1d | 2017-06-12 | 2017-06-12 | 73 | 19.5d |
| 75 |  | Paint all - 2nd floor | 1d | 2017-06-13 | 2017-06-13 | 74 | 19.5d |
| 76 |  | Paint exterior siding & trim work | 3d | 2017-06-14 | 2017-06-16 | 75 | 20d |
| 77 | 1.2.10.4 | **Cabinets** | 5.5d | 2017-06-09 | 2017-06-16 |  | 0d |
| 78 |  | Install 1st floor - kitchen cabinets | 2d | 2017-06-09 | 2017-06-12 | 72 | 22d |
| 79 |  | Install 1st floor - master bath and guest cabinets | 1d | 2017-06-09 | 2017-06-09 | 72 | 0d |
| 80 |  | Install 2nd floor - hall bath and private bath cabinets | 0.5d | 2017-06-14 | 2017-06-14 | 75 | 19.5d |
| 81 |  | Install chair rails, crown moldings, trim | 2d | 2017-06-14 | 2017-06-16 | 80, 78, 79 | 20.5d |
| 82 | 1.2.10.5 | **Finish Plumbing** | 6d | 2017-06-12 | 2017-06-19 |  | 0d |
| 83 |  | Complete 1st floor - kitchen plumbing | 1d | 2017-06-12 | 2017-06-12 | 79 | 0d |
| 84 |  | Complete 1st floor - master bath and guest plumbing | 4d | 2017-06-13 | 2017-06-16 | 83 | 19d |
| 85 |  | Complete 2nd floor - hall bath and private bath plumbing | 2d | 2017-06-14 | 2017-06-16 | 80 | 19.5d |
| 86 |  | Conduct finish plumbing inspection | 1d | 2017-06-19 | 2017-06-19 | 85, 83, 84 | 19d |
| 87 | 1.2.10.6 | **Finish Electrical** | 5d | 2017-06-12 | 2017-06-16 |  | 1d |
| 88 |  | Complete 1st floor circuits to service panel | 1d | 2017-06-12 | 2017-06-12 | 79 | 24d |
| 89 |  | Complete 2nd floor circuits to service panel | 1d | 2017-06-13 | 2017-06-13 | 83 | 0d |
| 90 |  | Conduct finish electrical inspection | 1d | 2017-06-14 | 2017-06-14 | 89 | 0d |
| 91 |  | Complete communications wiring - phone, cable, computer, alarm | 2d | 2017-06-15 | 2017-06-16 | 90 | 0d |
| 92 | 1.2.10.7 | **Finish HVAC** | 2d | 2017-06-19 | 2017-06-20 |  | 0d |
| 93 |  | Complete 1st floor - zone 1 HVAC | 1d | 2017-06-19 | 2017-06-19 | 91 | 0d |
| 94 |  | Complete 2nd floor - zone 2 HVAC | 1d | 2017-06-19 | 2017-06-19 | 91 | 0d |
| 95 |  | Conduct HVAC inspection | 1d | 2017-06-20 | 2017-06-20 | 93, 94 | 0d |
| 96 | 1.2.10.8 | **Carpet, Tile and Appliances** | 7d | 2017-06-21 | 2017-06-29 |  | 0d |
| 97 |  | Tile entry, kitchen and baths | 3d | 2017-06-21 | 2017-06-23 | 95 | 0d |
| 98 |  | Carpet 1st floor | 1d | 2017-06-26 | 2017-06-26 | 97 | 0d |
| 99 |  | Carpet 2nd floor | 1d | 2017-06-27 | 2017-06-27 | 98 | 0d |
| 100 |  | Install appliances | 2d | 2017-06-28 | 2017-06-29 | 99, 97, 98 | 0d |
| 101 | 1.3 | **Landscaping and Grounds Work** | 3d | 2017-06-30 | 2017-07-04 |  | 0d |
| 102 |  | Pour concrete driveway and sidewalks | 2d | 2017-06-30 | 2017-07-03 | 100 | 0d |
| 103 |  | Install backyard fence | 3d | 2017-06-30 | 2017-07-04 | 100 | 8d |
| 104 |  | Sod and complete plantings - front yard | 1d | 2017-07-04 | 2017-07-04 | 102 | 8d |
| 105 |  | Sod and complete plantings - backyard | 1d | 2017-07-04 | 2017-07-04 | 102 | 0d |
| 106 | 1.4 | **Final Acceptance** | 8d | 2017-07-05 | 2017-07-14 |  | 0d |
| 107 |  | Complete final inspection for certificate of occupancy | 1d | 2017-07-05 | 2017-07-05 | 105 | 0d |
| 108 |  | Cleanup for occupancy | 1d | 2017-07-06 | 2017-07-06 | 107 | 0d |
| 109 |  | Perform final walk-through inspection | 1d | 2017-07-07 | 2017-07-07 | 108 | 0d |
| 110 |  | Complete punch list items | 5d | 2017-07-10 | 2017-07-14 | 109 | 0d |
| 111 |  | End Project Milestone | 0d | 2017-07-14 | 2017-07-14 | 110 | 0d |

## Version 2 (data date 2017-01-18, saved 2017-03-01)

Note of the change: Added Material Resources - not working

Last finish stays 2017-07-14.

Changed:

| ID | Task | Other |
| --- | --- | --- |
| 7 | Secure foundation permit | resources General contractor [5%] → General contractor [5%]; Permits [16%] |
| 8 | Secure framing permit | resources General contractor [5%] → General contractor [5%]; Permits [16%] |

## Version 3 (data date 2017-01-18, saved 2017-03-02)

Note of the change: Added HW9 - Done

Last finish 2017-07-14 → 2017-07-17 (+3d).

Changed:

| ID | Task | Start | Finish | Duration | Total float | Other |
| --- | --- | --- | --- | --- | --- | --- |
| 1 | **Single Family House - Architect Design** |  | 2017-07-14 → 2017-07-17 (+3d) | 129d → 130d |  |  |
| 3 | **General Conditions** |  | 2017-06-29 → 2017-07-04 (+5d) | 118d → 121d | 11d → 9d |  |
| 5 | Sign contract and notice to proceed |  | 2017-01-31 → 2017-02-01 (+1d) | 1d → 2d |  | resources none → Owner; General contractor [50%]; Architect [50%] |
| 6 | **Apply for Permits** | 2017-02-01 → 2017-02-02 (+1d) | 2017-02-14 → 2017-02-15 (+1d) |  |  |  |
| 7 | Secure foundation permit | 2017-02-01 → 2017-02-02 (+1d) | 2017-02-14 → 2017-02-15 (+1d) | 10d → 9d |  | resources General contractor [5%]; Permits [16%] → General contractor [5%]; Permits [0.1%] |
| 8 | Secure framing permit | 2017-02-01 → 2017-02-02 (+1d) | 2017-02-14 → 2017-02-15 (+1d) | 10d → 9d |  | resources General contractor [5%]; Permits [16%] → General contractor [5%]; Permits [0.1%] |
| 9 | Secure electrical permit | 2017-02-01 → 2017-02-02 (+1d) | 2017-02-14 → 2017-02-15 (+1d) | 10d → 9d |  | resources General contractor [10%] → General contractor [10%]; Permits [0.1%] |
| 10 | Secure plumbing permit | 2017-02-01 → 2017-02-02 (+1d) | 2017-02-14 → 2017-02-15 (+1d) | 10d → 9d |  | resources General contractor [10%] → General contractor [10%]; Permits [0.1%] |
| 11 | Secure HVAC permit | 2017-02-01 → 2017-02-02 (+1d) | 2017-02-14 → 2017-02-15 (+1d) | 10d → 9d |  | resources General contractor [10%] → General contractor [10%]; Permits [0.1%] |
| 12 | Secure miscellaneous permits | 2017-02-01 → 2017-02-02 (+1d) | 2017-02-14 → 2017-02-15 (+1d) | 10d → 9d |  | resources General contractor [10%] → General contractor [10%]; Permits [0.1%] |
| 13 | **Site Work** | 2017-02-15 → 2017-02-16 (+1d) | 2017-02-17 → 2017-02-20 (+3d) |  |  |  |
| 14 | Clear and grub lot | 2017-02-15 → 2017-02-16 (+1d) | 2017-02-15 → 2017-02-16 (+1d) |  |  | resources Site excavation contractor → Site excavation contractor; Excavation [0.1%] |
| 15 | Install temporary power service | 2017-02-16 → 2017-02-17 (+1d) | 2017-02-16 → 2017-02-17 (+1d) |  |  | resources Electric Company [50%] → Electric Company [50%]; General contractor [50%] |
| 16 | Install underground utilities | 2017-02-17 → 2017-02-20 (+3d) | 2017-02-17 → 2017-02-20 (+3d) |  |  | resources Site excavation contractor → Site excavation contractor; Excavation [0.1%] |
| 17 | **Foundation** | 2017-02-16 → 2017-02-17 (+1d) | 2017-03-15 → 2017-03-20 (+5d) | 20d → 22d |  |  |
| 18 | Excavate for foundations | 2017-02-16 → 2017-02-17 (+1d) | 2017-02-16 → 2017-02-17 (+1d) |  |  | resources Site excavation contractor → Site excavation contractor; Excavation [0.1%] |
| 19 | Form basement walls | 2017-02-17 → 2017-02-20 (+3d) | 2017-02-27 → 2017-02-28 (+1d) | 7d → 5d |  | resources Concrete Contractor → Concrete Contractor; Concrete [0.1%] |
| 20 | Place concrete for foundations & basement walls | 2017-02-28 → 2017-03-01 (+1d) | 2017-02-28 → 2017-03-01 (+1d) |  |  | resources Concrete Contractor → Concrete Contractor; Concrete [0.1%] |
| 21 | Cure basement walls for 7 days | 2017-03-01 → 2017-03-02 (+1d) | 2017-03-07 → 2017-03-10 (+3d) | 5d → 7d |  | resources none → Concrete Contractor [25%] |
| 22 | Strip basement wall forms | 2017-03-08 → 2017-03-13 (+5d) | 2017-03-08 → 2017-03-13 (+5d) |  |  | resources Concrete Contractor → Concrete Contractor; Lumber [0.1%] |
| 23 | Waterproof/insulate basement walls | 2017-03-09 → 2017-03-14 (+5d) | 2017-03-10 → 2017-03-15 (+5d) |  |  | resources Insulation contractor → Insulation contractor; Insulation [0.1%] |
| 24 | Perform foundation inspection | 2017-03-13 → 2017-03-16 (+3d) | 2017-03-13 → 2017-03-16 (+3d) |  |  | resources Inspector → Inspector; General contractor [50%] |
| 25 | Backfill foundation | 2017-03-14 → 2017-03-17 (+3d) | 2017-03-15 → 2017-03-20 (+5d) |  |  | resources Siding conractor [50%] → Site excavation contractor [50%] |
| 26 | **Framing** | 2017-03-16 → 2017-03-21 (+5d) | 2017-04-14 → 2017-04-19 (+5d) |  |  |  |
| 27 | Install 1st floor joists | 2017-03-16 → 2017-03-21 (+5d) | 2017-03-17 → 2017-03-22 (+5d) |  |  | resources Framing contractor → Framing contractor; Lumber [0.1%] |
| 28 | Lay 1st floor decking | 2017-03-20 → 2017-03-23 (+3d) | 2017-03-21 → 2017-03-24 (+3d) |  |  | resources Framing contractor → Framing contractor; Lumber [0.1%] |
| 29 | Frame 1st floor walls | 2017-03-22 → 2017-03-27 (+5d) | 2017-03-27 → 2017-03-30 (+3d) | 4d → 2d |  | resources Framing contractor → Framing contractor; Lumber [0.1%] |
| 30 | Frame 1st floor corners | 2017-03-28 → 2017-03-31 (+3d) | 2017-03-28 → 2017-03-31 (+3d) |  |  | resources Framing contractor → Framing contractor; Lumber [0.1%] |
| 31 | Install 2nd floor joists | 2017-03-29 → 2017-04-03 (+5d) | 2017-03-30 → 2017-04-04 (+5d) |  |  | resources Framing contractor → Framing contractor; Lumber [0.1%] |
| 32 | Frame 2nd floor decking | 2017-03-31 → 2017-04-05 (+5d) | 2017-04-03 → 2017-04-06 (+3d) |  |  | resources Framing contractor → Framing contractor; Lumber [0.1%] |
| 33 | Frame 2nd floor walls | 2017-04-04 → 2017-04-07 (+3d) | 2017-04-06 → 2017-04-11 (+5d) |  |  | resources Framing contractor → Framing contractor; Lumber [0.1%] |
| 34 | Frame 2nd floor corners | 2017-04-07 → 2017-04-12 (+5d) | 2017-04-10 → 2017-04-13 (+3d) |  |  | resources Framing contractor → Framing contractor; Lumber [0.1%] |
| 35 | Complete roof framing | 2017-04-11 → 2017-04-14 (+3d) | 2017-04-13 → 2017-04-18 (+5d) |  |  | resources Framing contractor → Framing contractor; Lumber [0.1%] |
| 36 | Conduct framing inspection | 2017-04-14 → 2017-04-19 (+5d) | 2017-04-14 → 2017-04-19 (+5d) |  |  | resources Inspector → Inspector; General contractor [50%] |
| 37 | **Dry In** | 2017-04-17 → 2017-04-20 (+3d) | 2017-04-20 → 2017-04-25 (+5d) |  | 55d → 53d |  |
| 38 | Install 1st floor sheathing | 2017-04-17 → 2017-04-20 (+3d) | 2017-04-17 → 2017-04-20 (+3d) |  | 55d → 53d | resources Framing contractor [200%] → Framing contractor [200%]; Lumber [0.1%] |
| 39 | Install 2nd floor sheathing | 2017-04-17 → 2017-04-20 (+3d) | 2017-04-17 → 2017-04-20 (+3d) |  | 62d → 60d | resources Framing contractor [300%] → Framing contractor [300%]; Lumber [0.1%] |
| 40 | Install roof decking | 2017-04-17 → 2017-04-20 (+3d) | 2017-04-18 → 2017-04-21 (+3d) |  | 61d → 59d | resources Roofing contractor [300%] → Roofing contractor [300%]; Roofing [0.1%] |
| 41 | Install felt, flashing and shingles | 2017-04-19 → 2017-04-24 (+5d) | 2017-04-20 → 2017-04-25 (+5d) |  | 61d → 59d | resources Siding conractor [400%] → Siding conractor [400%]; Siding [0.1%] |
| 42 | Hang 1st floor exterior doors | 2017-04-18 → 2017-04-21 (+3d) | 2017-04-18 → 2017-04-21 (+3d) |  | 63d → 61d | resources Finish Carpentry Cotnractor → Finish Carpentry Cotnractor; Doors [0.1%] |
| 43 | Install 1st floor windows | 2017-04-18 → 2017-04-21 (+3d) | 2017-04-19 → 2017-04-24 (+5d) | 2d → 1d | 55d → 53d | resources Finish Carpentry Cotnractor [200%] → Finish Carpentry Cotnractor [200%]; Windows [0.1%] |
| 44 | Install 2nd floor windows | 2017-04-18 → 2017-04-21 (+3d) | 2017-04-19 → 2017-04-24 (+5d) | 2d → 1d | 62d → 60d | resources Finish Carpentry Cotnractor [200%] → Finish Carpentry Cotnractor [200%]; Windows [0.1%] |
| 45 | **Exterior Finishes** | 2017-04-20 → 2017-04-25 (+5d) | 2017-04-28 → 2017-05-03 (+5d) |  | 55d → 53d |  |
| 46 | Complete exterior brick | 2017-04-20 → 2017-04-25 (+5d) | 2017-04-25 → 2017-04-28 (+3d) |  | 55d → 53d | resources Masonry contractor [200%] → Masonry contractor [200%]; Brick facing [0.1%] |
| 47 | Complete exterior siding | 2017-04-26 → 2017-05-01 (+5d) | 2017-04-28 → 2017-05-03 (+5d) |  | 55d → 53d | resources Siding conractor [400%] → Siding conractor [400%]; Siding [0.1%] |
| 48 | **Utility Rough-B97Ins and Complete Concrete** | 2017-04-17 → 2017-04-20 (+3d) | 2017-05-17 → 2017-05-22 (+5d) |  |  |  |
| 49 | Rough-in plumbing | 2017-04-17 → 2017-04-20 (+3d) | 2017-04-21 → 2017-04-26 (+5d) |  |  | resources Plumbing contractor → Plumbing contractor; Rough in plumbing [0.1%] |
| 50 | Conduct rough-in plumbing inspection | 2017-04-24 → 2017-04-27 (+3d) | 2017-04-24 → 2017-04-27 (+3d) |  |  | resources Inspector [30%] → Inspector [30%]; General contractor [50%] |
| 51 | Place concrete for basement floor | 2017-04-25 → 2017-04-28 (+3d) | 2017-05-01 → 2017-05-04 (+3d) |  |  | resources Concrete Contractor → Concrete Contractor; Concrete [0.1%] |
| 52 | Rough-in electrical | 2017-05-02 → 2017-05-05 (+3d) | 2017-05-08 → 2017-05-11 (+3d) |  |  | resources Electric Contractor [200%] → Electric Contractor [200%]; Rough in electirc [0.1%] |
| 53 | Conduct rough-in electrical inspection | 2017-05-09 → 2017-05-12 (+3d) | 2017-05-09 → 2017-05-12 (+3d) |  |  | resources Inspector [30%] → Inspector [30%]; General contractor [30%] |
| 54 | Rough-in HVAC | 2017-05-10 → 2017-05-15 (+5d) | 2017-05-12 → 2017-05-17 (+5d) |  |  |  |
| 55 | Conduct rough-in HVAC inspection | 2017-05-15 → 2017-05-18 (+3d) | 2017-05-15 → 2017-05-18 (+3d) |  |  | resources Inspector [30%] → Inspector [30%]; General contractor [30%] |
| 56 | Rough-in communication - phone, cable, computer, alarm | 2017-05-16 → 2017-05-19 (+3d) | 2017-05-17 → 2017-05-22 (+5d) |  |  | resources Electric Contractor → Electric Contractor; Finish - Electrical [0.1%] |
| 57 | **Interior Finishes** | 2017-05-18 → 2017-05-23 (+5d) | 2017-06-29 → 2017-07-04 (+5d) |  |  |  |
| 58 | **Insulation** | 2017-05-18 → 2017-05-23 (+5d) | 2017-05-23 → 2017-05-26 (+3d) |  |  |  |
| 59 | Place wall insulation - 1st floor | 2017-05-18 → 2017-05-23 (+5d) | 2017-05-18 → 2017-05-23 (+5d) |  |  | resources Insulation contractor → Insulation contractor; Insulation [0.1%] |
| 60 | Place wall insulation - 2nd floor | 2017-05-19 → 2017-05-24 (+5d) | 2017-05-19 → 2017-05-24 (+5d) |  |  | resources Insulation contractor → Insulation contractor; Insulation [0.1%] |
| 61 | Place ceiling insulation - 2nd floor | 2017-05-22 → 2017-05-25 (+3d) | 2017-05-22 → 2017-05-25 (+3d) |  |  | resources Insulation contractor → Insulation contractor; Insulation [0.1%] |
| 62 | Conduct insulation inspection | 2017-05-23 → 2017-05-26 (+3d) | 2017-05-23 → 2017-05-26 (+3d) |  |  | resources Inspector [50%] → Inspector [50%]; General contractor [50%] |
| 63 | **Drywall** | 2017-05-24 → 2017-05-29 (+5d) | 2017-06-06 → 2017-06-09 (+3d) |  |  |  |
| 64 | Install drywall - 1st floor walls | 2017-05-24 → 2017-05-29 (+5d) | 2017-05-25 → 2017-05-30 (+5d) |  |  | resources Drywal Contractor [200%] → Drywal Contractor [200%]; Drywall [0.1%] |
| 65 | Install drywall - 1st floor overhead | 2017-05-26 → 2017-05-31 (+5d) | 2017-05-29 → 2017-06-01 (+3d) |  |  | resources Drywal Contractor [200%] → Drywal Contractor [200%]; Drywall [0.1%] |
| 66 | Install drywall 2nd floor walls | 2017-05-30 → 2017-06-02 (+3d) | 2017-05-31 → 2017-06-05 (+5d) |  |  | resources Drywal Contractor [200%] → Drywal Contractor [200%]; Drywall [0.1%] |
| 67 | Install drywall 2nd floor overhead | 2017-06-01 → 2017-06-06 (+5d) | 2017-06-02 → 2017-06-07 (+5d) |  |  | resources Drywal Contractor [200%] → Drywal Contractor [200%]; Drywall [0.1%] |
| 68 | Tape and float 1st floor drywall | 2017-06-05 → 2017-06-08 (+3d) | 2017-06-05 → 2017-06-08 (+3d) |  |  | resources Drywal Contractor → Drywal Contractor; Drywall [0.1%] |
| 69 | Tape and float 2nd floor drywall | 2017-06-06 → 2017-06-09 (+3d) | 2017-06-06 → 2017-06-09 (+3d) |  |  | resources Drywal Contractor → Drywal Contractor; Drywall [0.1%] |
| 70 | **Paint and Wallpaper** | 2017-06-07 → 2017-06-12 (+5d) | 2017-06-16 → 2017-06-21 (+5d) |  |  |  |
| 71 | Texture all except entry and kitchen - 1st floor | 2017-06-07 → 2017-06-12 (+5d) | 2017-06-07 → 2017-06-12 (+5d) |  |  | resources Painting contractor [200%] → Painting contractor [200%]; Paint [0.1%] |
| 72 | Paint all except entry and kitchen - 1st floor | 2017-06-08 → 2017-06-13 (+5d) | 2017-06-08 → 2017-06-13 (+5d) |  |  | resources Painting contractor [200%] → Painting contractor [200%]; Paint [0.1%] |

| ID | Task | Start | Finish | Duration | Total float | Other |
| --- | --- | --- | --- | --- | --- | --- |
| 73 | Hang wallpaper entry and kitchen - 1st floor | 2017-06-09 → 2017-06-14 (+5d) | 2017-06-09 → 2017-06-14 (+5d) |  | 19.5d → 17d | resources Painting contractor → Painting contractor; Paint [0.1%] |
| 74 | Texture all - 2nd floor | 2017-06-12 → 2017-06-15 (+3d) | 2017-06-12 → 2017-06-15 (+3d) |  | 19.5d → 17d | resources Painting contractor → Painting contractor; Paint [0.1%] |
| 75 | Paint all - 2nd floor | 2017-06-13 → 2017-06-16 (+3d) | 2017-06-13 → 2017-06-16 (+3d) |  | 19.5d → 17d | resources Painting contractor → Painting contractor; Paint [0.1%] |
| 76 | Paint exterior siding & trim work | 2017-06-14 → 2017-06-19 (+5d) | 2017-06-16 → 2017-06-21 (+5d) |  | 20d → 18d | resources Painting contractor [200%] → Painting contractor [200%]; Paint [0.1%] |
| 77 | **Cabinets** | 2017-06-09 → 2017-06-14 (+5d) | 2017-06-16 → 2017-06-21 (+5d) | 5.5d → 6d |  |  |
| 78 | Install 1st floor - kitchen cabinets | 2017-06-09 → 2017-06-14 (+5d) | 2017-06-12 → 2017-06-15 (+3d) |  | 22d → 20d | resources Finish Carpentry Cotnractor [200%] → Finish Carpentry Cotnractor [200%]; Cabinets Molding and trim [0.1%] |
| 79 | Install 1st floor - master bath and guest cabinets | 2017-06-09 → 2017-06-14 (+5d) | 2017-06-09 → 2017-06-14 (+5d) |  |  | resources Finish Carpentry Cotnractor [200%] → Finish Carpentry Cotnractor [200%]; Cabinets Molding and trim [0.1%] |
| 80 | Install 2nd floor - hall bath and private bath cabinets | 2017-06-14 → 2017-06-19 (+5d) | 2017-06-14 → 2017-06-19 (+5d) | 0.5d → 1d | 19.5d → 17d | resources Finish Carpentry Cotnractor [200%] → Finish Carpentry Cotnractor [200%]; Cabinets Molding and trim [0.1%] |
| 81 | Install chair rails, crown moldings, trim | 2017-06-14 → 2017-06-20 (+6d) | 2017-06-16 → 2017-06-21 (+5d) | 2d → 1d | 20.5d → 18d | resources Finish Carpentry Cotnractor → Finish Carpentry Cotnractor; Cabinets Molding and trim [0.1%] |
| 82 | **Finish Plumbing** | 2017-06-12 → 2017-06-15 (+3d) | 2017-06-19 → 2017-06-22 (+3d) |  |  |  |
| 83 | Complete 1st floor - kitchen plumbing | 2017-06-12 → 2017-06-15 (+3d) | 2017-06-12 → 2017-06-15 (+3d) |  |  | resources Plumbing contractor [50%] → Plumbing contractor [50%]; Finish - Plumbing [0.1%] |
| 84 | Complete 1st floor - master bath and guest plumbing | 2017-06-13 → 2017-06-16 (+3d) | 2017-06-16 → 2017-06-21 (+5d) | 4d → 2d | 19d → 17d | resources Plumbing contractor [50%] → Plumbing contractor [50%]; Finish - Plumbing [0.1%] |
| 85 | Complete 2nd floor - hall bath and private bath plumbing | 2017-06-14 → 2017-06-20 (+6d) | 2017-06-16 → 2017-06-21 (+5d) |  | 19.5d → 17d | resources Plumbing contractor [50%] → Plumbing contractor [50%]; Finish - Plumbing [0.1%] |
| 86 | Conduct finish plumbing inspection | 2017-06-19 → 2017-06-22 (+3d) | 2017-06-19 → 2017-06-22 (+3d) |  | 19d → 17d | resources Inspector → Inspector [50%]; General contractor [25%] |
| 87 | **Finish Electrical** | 2017-06-12 → 2017-06-15 (+3d) | 2017-06-16 → 2017-06-21 (+5d) |  |  |  |
| 88 | Complete 1st floor circuits to service panel | 2017-06-12 → 2017-06-15 (+3d) | 2017-06-12 → 2017-06-15 (+3d) |  | 24d → 22d | resources Electric Company → Electric Contractor; Finish - Electrical [0.1%] |
| 89 | Complete 2nd floor circuits to service panel | 2017-06-13 → 2017-06-16 (+3d) | 2017-06-13 → 2017-06-16 (+3d) |  |  | resources Electric Company → Electric Contractor; Finish - Electrical [0.1%] |
| 90 | Conduct finish electrical inspection | 2017-06-14 → 2017-06-19 (+5d) | 2017-06-14 → 2017-06-19 (+5d) |  |  | resources Inspector → Inspector; General contractor [50%] |
| 91 | Complete communications wiring - phone, cable, computer, alarm | 2017-06-15 → 2017-06-20 (+5d) | 2017-06-16 → 2017-06-21 (+5d) |  |  | resources Electric Company [150%] → Electric Contractor; Finish - Electrical [0.1%] |
| 92 | **Finish HVAC** | 2017-06-19 → 2017-06-22 (+3d) | 2017-06-20 → 2017-06-23 (+3d) |  |  |  |
| 93 | Complete 1st floor - zone 1 HVAC | 2017-06-19 → 2017-06-22 (+3d) | 2017-06-19 → 2017-06-22 (+3d) |  |  |  |
| 94 | Complete 2nd floor - zone 2 HVAC | 2017-06-19 → 2017-06-22 (+3d) | 2017-06-19 → 2017-06-22 (+3d) |  |  |  |
| 95 | Conduct HVAC inspection | 2017-06-20 → 2017-06-23 (+3d) | 2017-06-20 → 2017-06-23 (+3d) |  |  | resources Inspector → Inspector; General contractor [25%] |
| 96 | **Carpet, Tile and Appliances** | 2017-06-21 → 2017-06-26 (+5d) | 2017-06-29 → 2017-07-04 (+5d) |  |  |  |
| 97 | Tile entry, kitchen and baths | 2017-06-21 → 2017-06-26 (+5d) | 2017-06-23 → 2017-06-28 (+5d) |  |  | resources Masonry contractor → Masonry contractor; Tile - grout - mortar and etc [0.1%] |
| 98 | Carpet 1st floor | 2017-06-26 → 2017-06-29 (+3d) | 2017-06-26 → 2017-06-29 (+3d) |  |  | resources Fencing Contractor [200%] → Flooring Contractor [200%]; Carpete floor [0.1%] |
| 99 | Carpet 2nd floor | 2017-06-27 → 2017-06-30 (+3d) | 2017-06-27 → 2017-06-30 (+3d) |  |  | resources Flooring Contractor [200%] → Flooring Contractor [200%]; Carpete floor [0.1%] |
| 100 | Install appliances | 2017-06-28 → 2017-07-03 (+5d) | 2017-06-29 → 2017-07-04 (+5d) |  |  | resources Appliance Contractor [200%] → Appliance Contractor [200%]; Appliances [0.1%] |
| 101 | **Landscaping and Grounds Work** | 2017-06-30 → 2017-07-05 (+5d) | 2017-07-04 → 2017-07-07 (+3d) |  |  |  |
| 102 | Pour concrete driveway and sidewalks | 2017-06-30 → 2017-07-05 (+5d) | 2017-07-03 → 2017-07-06 (+3d) |  |  | resources Concrete Contractor [200%] → Concrete Contractor [200%]; Concrete [0.1%] |
| 103 | Install backyard fence | 2017-06-30 → 2017-07-05 (+5d) | 2017-07-04 → 2017-07-07 (+3d) |  | 8d → 6d | resources Fencing Contractor [300%] → Fencing Contractor [300%]; Fencing [0.1%] |
| 104 | Sod and complete plantings - front yard | 2017-07-04 → 2017-07-07 (+3d) | 2017-07-04 → 2017-07-07 (+3d) |  | 8d → 6d | resources Landscape contractor [200%] → Landscape contractor [200%]; Sod [0.1%] |
| 105 | Sod and complete plantings - backyard | 2017-07-04 → 2017-07-07 (+3d) | 2017-07-04 → 2017-07-07 (+3d) |  |  | resources Landscape contractor [200%] → Landscape contractor [200%]; Sod [0.1%] |
| 106 | **Final Acceptance** | 2017-07-05 → 2017-07-10 (+5d) | 2017-07-14 → 2017-07-17 (+3d) | 8d → 6d |  |  |
| 107 | Complete final inspection for certificate of occupancy | 2017-07-05 → 2017-07-10 (+5d) | 2017-07-05 → 2017-07-10 (+5d) |  |  | resources Inspector → Inspector; General contractor |
| 108 | Cleanup for occupancy | 2017-07-06 → 2017-07-11 (+5d) | 2017-07-06 → 2017-07-11 (+5d) |  |  |  |
| 109 | Perform final walk-through inspection | 2017-07-07 → 2017-07-12 (+5d) | 2017-07-07 → 2017-07-12 (+5d) |  |  | resources Owner → Owner; General contractor |
| 110 | Complete punch list items | 2017-07-10 → 2017-07-13 (+3d) | 2017-07-14 → 2017-07-17 (+3d) | 5d → 3d |  |  |
| 111 | End Project Milestone | 2017-07-14 → 2017-07-17 (+3d) | 2017-07-14 → 2017-07-17 (+3d) |  |  |  |
